Schedule from MS Project, 2019-06-03 to 2020-01-03, A marks actual dates.
Microsoft

## Calendars

- 标准: Mon-Fri 08:00-12:00, 13:00-17:00; Sat-Sun off. Exceptions (off unless hours are given): 2019-06-15 08:00-12:00, 13:00-17:00.

## Resources

| Resource |
| --- |
| 高祥云 |
| 罗加云 |
| 杜振兴 |
| 陈子瑶 |
| 李龙 |
| JAVA团队 |
| 王晓旭 |
| 秦建锐 |

## Schedule

| ID | WBS | Task | Type | Duration | Start | Finish | Complete | Remaining | Total slack | Constraint | Resources | Work | 交付物 | 进度 |
| --- | --- | --- | --- | --- | --- | --- | --- | --- | --- | --- | --- | --- | --- | --- |
| 1 | 1 | YJTXT_BI_V2.0R | manual | 17d | 2019-11-12 A | 2019-12-05 | 15% | 14.39d |  |  |  |  |  |  |
| 2 | 2 | **项目规化阶段** |  | 17d | 2019-11-13 | 2019-12-05 |  |  |  |  |  | 240h |  |  |
| 3 | 2.1 | **需求调研** |  | 17d | 2019-11-13 | 2019-12-05 |  |  |  |  |  | 240h | 需求分析文档 |  |
| 4 | 2.1.1 | **行业产品分析5个模块（李帆）** |  | 6d | 2019-11-13 | 2019-11-20 |  |  | 0d |  |  | 240h |  | 80% |
| 5 | 2.1.1.1 | 各地市承建厂商 | manual | 6d | 2019-11-13 | 2019-11-20 |  |  |  |  | 高祥云 | 48h |  | 100% |
| 6 | 2.1.1.2 | 今年项目状态 | manual | 6d | 2019-11-13 | 2019-11-20 |  |  |  |  | 高祥云 | 48h |  | 100% |
| 7 | 2.1.1.3 | 锐安介入情况 | manual | 6d | 2019-11-13 | 2019-11-20 |  |  |  |  | 高祥云 | 48h |  | 100% |
| 8 | 2.1.1.4 | 近期报工情况 | manual | 6d | 2019-11-13 | 2019-11-20 |  |  |  |  | 高祥云 | 48h |  | 100% |
| 9 | 2.1.1.5 | 重点客户动态 | manual | 6d | 2019-11-13 | 2019-11-20 |  |  |  |  | 高祥云 | 48h |  | 100% |
| 10 | 2.1.2 | 工程售后分析2个模块 | manual | 7d | 2019-11-21 | 2019-11-29 |  |  |  | finish no earlier than 2019-11-29 |  |  |  |  |
| 11 | 2.1.3 | 研发项目分析5个模块（廉喆） | manual | 3d | 2019-12-03 | 2019-12-05 |  |  |  | finish no earlier than 2019-12-11 |  |  |  |  |
| 12 | 3 | **项目开发阶段** |  | 38d | 2019-11-13 | 2020-01-03 |  |  |  |  |  | 1032h |  |  |
| 13 | 3.1 | **行业产品分析5个模块（李帆）** |  | 23d | 2019-11-13 | 2019-12-13 |  |  | 0d |  |  | 792h |  |  |
| 14 | 3.1.1 | **各地市承建厂商** |  | 18d | 2019-11-13 | 2019-12-06 |  |  |  |  |  | 216h | 概要文档、详细文档、测试用例、测试报告 | 100% |
| 15 | 3.1.1.1 | 来源数据分析梳理 | manual | 1d | 2019-11-13 | 2019-11-13 |  |  |  | finish no earlier than 2019-11-13 | 罗加云 | 8h |  | 100% |
| 16 | 3.1.1.2 | 数据建模 | manual | 1d | 2019-11-13 | 2019-11-14 |  |  |  | start no earlier than 2019-11-13 | 罗加云 | 8h |  | 100% |
| 17 | 3.1.1.3 | ETL开发 | manual | 6d | 2019-11-15 | 2019-11-22 |  |  |  | finish no earlier than 2019-11-22 | 罗加云 | 48h |  | 100% |
| 18 | 3.1.1.4 | 报表开发 | manual | 7d | 2019-11-14 | 2019-11-22 |  |  |  | finish no earlier than 2019-11-22 | 杜振兴 | 56h |  | 100% |
| 19 | 3.1.1.5 | 测试 | manual | 2d | 2019-11-25 | 2019-11-26 |  |  |  | finish no earlier than 2019-11-26 | 杜振兴 | 16h |  | 100% |
| 20 | 3.1.1.6 | 上线 | manual | 1d | 2019-11-26 | 2019-11-26 |  |  |  | finish no earlier than 2019-11-26 | 杜振兴 | 8h |  | 100% |
| 21 | 3.1.1.7 | 上线试运行及相关调整 | manual | 9d | 2019-11-26 | 2019-12-06 |  |  |  | finish no earlier than 2019-11-26 | 杜振兴 | 72h |  |  |
| 22 | 3.1.2 | **今年项目状态** |  | 14d | 2019-11-26 | 2019-12-13 |  |  |  |  |  | 160h | 概要文档、详细文档、测试用例、测试报告 | 90% |
| 23 | 3.1.2.1 | 来源数据分析梳理 | manual | 1d | 2019-11-26 | 2019-11-26 |  |  |  | finish no earlier than 2019-11-26 | 罗加云 | 8h |  | 100% |
| 24 | 3.1.2.2 | 数据建模 | manual | 1d | 2019-11-26 | 2019-11-26 |  |  |  | finish no earlier than 2019-11-26 | 罗加云 | 8h |  | 100% |
| 25 | 3.1.2.3 | ETL开发 | manual | 3d | 2019-11-27 | 2019-11-29 |  |  |  | finish no earlier than 2019-11-29 | 罗加云 | 24h |  | 100% |
| 26 | 3.1.2.4 | 报表开发 | manual | 3d | 2019-11-27 | 2019-12-02 |  |  |  | start no earlier than 2019-11-27 | 杜振兴 | 24h |  | 100% |
| 27 | 3.1.2.5 | 测试 | manual | 1d | 2019-12-02 | 2019-12-02 |  |  |  | finish no earlier than 2019-12-02 | 杜振兴 | 8h |  |  |
| 28 | 3.1.2.6 | 上线 | manual | 1d | 2019-12-02 | 2019-12-02 |  |  |  | finish no earlier than 2019-12-02 | 杜振兴 | 8h |  |  |
| 29 | 3.1.2.7 | 上线试运行及相关调整 | manual | 10d | 2019-12-02 | 2019-12-13 |  |  |  | start no earlier than 2019-12-02 | 杜振兴 | 80h |  |  |

| ID | WBS | Task | Type | Duration | Start | Finish | Constraint | Resources | Work | 交付物 | 进度 |
| --- | --- | --- | --- | --- | --- | --- | --- | --- | --- | --- | --- |
| 30 | 3.1.3 | **锐安介入情况** |  | 14d | 2019-11-26 | 2019-12-13 |  |  | 168h | 概要文档、详细文档、测试用例、测试报告 |  |
| 31 | 3.1.3.1 | 来源数据分析梳理 | manual | 1d | 2019-11-26 | 2019-11-26 | finish no earlier than 2019-11-26 | 罗加云 | 8h |  |  |
| 32 | 3.1.3.2 | 数据建模 | manual | 1d | 2019-11-26 | 2019-11-26 | finish no earlier than 2019-11-26 | 罗加云 | 8h |  | 50% |
| 33 | 3.1.3.3 | ETL开发 | manual | 3d | 2019-11-27 | 2019-11-29 | finish no earlier than 2019-11-29 | 罗加云 | 24h |  |  |
| 34 | 3.1.3.4 | 报表开发 | manual | 4d | 2019-11-27 | 2019-12-02 | finish no earlier than 2019-12-02 | 杜振兴 | 32h |  | 50% |
| 35 | 3.1.3.5 | 测试 | manual | 1d | 2019-12-02 | 2019-12-02 | finish no earlier than 2019-12-02 | 杜振兴 | 8h |  |  |
| 36 | 3.1.3.6 | 上线 | manual | 1d | 2019-12-02 | 2019-12-02 | finish no earlier than 2019-12-02 | 杜振兴 | 8h |  |  |
| 37 | 3.1.3.7 | 上线试运行及相关调整 | manual | 10d | 2019-12-02 | 2019-12-13 | start no earlier than 2019-12-02 | 杜振兴 | 80h |  |  |
| 38 | 3.1.4 | **近期报工情况** |  | 17d | 2019-11-21 | 2019-12-13 |  |  | 160h | 概要文档、详细文档、测试用例、测试报告 | 90% |
| 39 | 3.1.4.1 | 分析理解需求相关内容 | manual | 2d | 2019-11-18 | 2019-11-19 | finish no earlier than 2019-11-19 |  |  |  | 100% |
| 40 | 3.1.4.2 | 来源数据分析梳理 | manual | 2d | 2019-11-21 | 2019-11-22 | finish no earlier than 2019-11-22 | 秦建锐 | 16h |  | 100% |
| 41 | 3.1.4.3 | 数据建模 | manual | 1d | 2019-11-25 | 2019-11-25 | finish no earlier than 2019-11-25 | 秦建锐 | 8h |  | 100% |
| 42 | 3.1.4.4 | ETL开发 | manual | 3d | 2019-11-26 | 2019-11-28 | finish no earlier than 2019-11-29 | 秦建锐 | 24h |  | 100% |
| 43 | 3.1.4.5 | 报表开发 | manual | 2d | 2019-11-29 | 2019-12-02 | start no earlier than 2019-11-29 | 秦建锐 | 16h |  | 100% |
| 44 | 3.1.4.6 | 测试 | manual | 1d | 2019-12-03 | 2019-12-03 | start no earlier than 2019-12-03 | 秦建锐 | 8h |  | 100% |
| 45 | 3.1.4.7 | 上线 | manual | 1d | 2019-12-03 | 2019-12-03 | start no earlier than 2019-12-03 | 秦建锐 | 8h |  | 100% |
| 46 | 3.1.4.8 | 上线试运行及相关调整 | manual | 10d | 2019-12-02 | 2019-12-13 | start no earlier than 2019-12-02 | 杜振兴 | 80h |  |  |
| 47 | 3.1.5 | **重点客户动态** |  | 14d | 2019-11-26 | 2019-12-13 |  |  | 88h | 概要文档、详细文档、测试用例、测试报告 | 90% |
| 48 | 3.1.5.1 | 来源数据分析梳理 | manual | 1d | 2019-11-26 | 2019-11-26 |  | 罗加云 | 8h |  | 100% |
| 49 | 3.1.5.2 | 数据建模 | manual | 1d | 2019-11-26 | 2019-11-26 |  | 罗加云 | 8h |  | 100% |
| 50 | 3.1.5.3 | ETL开发 | manual | 3d | 2019-11-27 | 2019-11-29 |  | 罗加云 | 24h |  | 100% |
| 51 | 3.1.5.4 | 报表开发 | manual | 4d | 2019-11-27 | 2019-12-02 |  | 杜振兴 | 32h |  | 100% |
| 52 | 3.1.5.5 | 测试 | manual | 1d | 2019-12-02 | 2019-12-02 |  | 杜振兴 | 8h |  |  |
| 53 | 3.1.5.6 | 上线 | manual | 1d | 2019-12-02 | 2019-12-02 |  | 杜振兴 | 8h |  |  |
| 54 | 3.1.5.7 | 上线试运行及相关调整 | manual | 9d | 2019-12-03 | 2019-12-13 | finish no earlier than 2019-12-05 |  |  |  |  |

| ID | WBS | Task | Type | Duration | Start | Finish | Constraint | Resources | Work | 交付物 |
| --- | --- | --- | --- | --- | --- | --- | --- | --- | --- | --- |
| 55 | 3.2 | **工程售后分析3个模块** |  | 20d | 2019-12-09 | 2020-01-03 |  |  | 240h |  |
| 56 | 3.2.1 | **合同项目整体交付概况** |  | 15d | 2019-12-09 | 2019-12-27 |  |  | 72h | 概要文档、详细文档、测试用例、测试报告 |
| 57 | 3.2.1.1 | 来源数据分析梳理 | manual | 1d | 2019-12-09 | 2019-12-10 |  | 罗加云 | 8h |  |
| 58 | 3.2.1.2 | 数据建模 | manual | 1d | 2019-12-09 | 2019-12-10 |  | 罗加云 | 8h |  |
| 59 | 3.2.1.3 | ETL开发 | manual | 2d | 2019-12-10 | 2019-12-11 |  | 罗加云 | 16h |  |
| 60 | 3.2.1.4 | 报表开发 | manual | 2d | 2019-12-10 | 2019-12-11 |  | 杜振兴 | 16h |  |
| 61 | 3.2.1.5 | 测试 | manual | 1d | 2019-12-12 | 2019-12-13 |  | 杜振兴 | 8h |  |
| 62 | 3.2.1.6 | 上线 | manual | 2d | 2019-12-13 | 2019-12-16 |  | 杜振兴 | 16h |  |
| 63 | 3.2.1.7 | 上线试运行及相关调整 | manual | 9d | 2019-12-16 | 2019-12-27 | start no earlier than 2019-12-16 |  |  |  |
| 64 | 3.2.2 | **工程类排名** |  | 15d | 2019-12-16 | 2020-01-03 |  |  | 72h | 概要文档、详细文档、测试用例、测试报告 |
| 65 | 3.2.2.1 | 来源数据分析梳理 | manual | 1d | 2019-12-16 | 2019-12-17 |  | 罗加云 | 8h |  |
| 66 | 3.2.2.2 | 数据建模 | manual | 1d | 2019-12-16 | 2019-12-17 |  | 罗加云 | 8h |  |
| 67 | 3.2.2.3 | ETL开发 | manual | 2d | 2019-12-17 | 2019-12-18 |  | 罗加云 | 16h |  |
| 68 | 3.2.2.4 | 报表开发 | manual | 2d | 2019-12-17 | 2019-12-18 |  | 杜振兴 | 16h |  |
| 69 | 3.2.2.5 | 测试 | manual | 2d | 2019-12-19 | 2019-12-20 |  | 杜振兴 | 16h |  |
| 70 | 3.2.2.6 | 上线 | manual | 1d | 2019-12-20 | 2019-12-23 |  | 杜振兴 | 8h |  |
| 71 | 3.2.2.7 | 上线试运行及相关调整 | manual | 10d | 2019-12-23 | 2020-01-03 | start no earlier than 2019-12-23 |  |  |  |
| 72 | 3.2.3 | **售后类排名** |  | 15d | 2019-12-16 | 2020-01-03 |  |  | 96h | 概要文档、详细文档、测试用例、测试报告 |
| 73 | 3.2.3.1 | 来源数据分析梳理 | manual | 2d | 2019-12-16 | 2019-12-17 |  | 罗加云 | 16h |  |
| 74 | 3.2.3.2 | 数据建模 | manual | 2d | 2019-12-16 | 2019-12-17 |  | 罗加云 | 16h |  |
| 75 | 3.2.3.3 | ETL开发 | manual | 2d | 2019-12-17 | 2019-12-18 |  | 罗加云 | 16h |  |
| 76 | 3.2.3.4 | 报表开发 | manual | 2d | 2019-12-17 | 2019-12-18 |  | 杜振兴 | 16h |  |
| 77 | 3.2.3.5 | 测试 | manual | 2d | 2019-12-19 | 2019-12-20 |  | 杜振兴 | 16h |  |
| 78 | 3.2.3.6 | 上线 | manual | 2d | 2019-12-20 | 2019-12-23 |  | 杜振兴 | 16h |  |
| 79 | 3.2.3.7 | 上线试运行及相关调整 | manual | 10d | 2019-12-23 | 2020-01-03 | start no earlier than 2019-12-23 |  |  |  |

| ID | WBS | Task | Type | Duration | Start | Finish |
| --- | --- | --- | --- | --- | --- | --- |
| 80 | 3.3 | **研发项目分析5个模块（廉喆）** |  | 1d? | 2019-11-13 | 2019-11-14 |
| 81 | 3.3.1 | 来源数据分析梳理 | manual | 1d? | 2019-11-13 | 2019-11-14 |
| 82 | 3.3.2 | 数据建模 | manual | 1d? | 2019-11-13 | 2019-11-14 |
| 83 | 3.3.3 | ETL开发 | manual | 1d? | 2019-11-13 | 2019-11-14 |
| 84 | 3.3.4 | 报表开发 | manual | 1d? | 2019-11-13 | 2019-11-14 |
| 85 | 3.3.5 | 测试 | manual | 1d? | 2019-11-13 | 2019-11-14 |
| 86 | 3.3.6 | 上线 | manual | 1d? | 2019-11-13 | 2019-11-14 |
| 87 | 4 | **项目验收** |  | 1d? | 2019-06-03 | 2019-06-04 |
| 88 | 4.1 | 项目验收 | manual | 1d? | 2019-06-03 | 2019-06-04 |
| 89 | 4.2 | 项目运维 | manual | 1d? | 2019-06-03 | 2019-06-04 |
